# Cronograma

Schedule from MS Project, 2019-01-12 to 2019-02-20, status date 2019-02-01, A marks actual dates.

## Calendars

- Standard: Mon-Fri 08:00-12:00, 13:00-17:00; Sat 08:00-12:00, 13:00-15:00; Sun off.

## Schedule

| ID | WBS | Task | Type | Duration | Start | Finish | Predecessors | Complete | Remaining | Total slack | Free slack | Constraint |
| --- | --- | --- | --- | --- | --- | --- | --- | --- | --- | --- | --- | --- |
| 1 | 1 | **Proyecto "Qhatus - módulo de recursos humanos** |  | 32d? | 2019-01-12 A | 2019-02-20 |  | 56% | 14.04d? | 0d |  |  |
| 2 | 1.1 | Inicio del proyecto | milestone | 0d | 2019-01-12 A | 2019-01-12 A |  | 100% |  |  |  |  |
| 3 | 1.2 | Revisión de la metodologia de trabajo |  | 6d | 2019-01-12 A | 2019-01-19 A | 2 | 100% |  |  |  |  |
| 4 | 1.3 | **Procesos de Gestión** |  | 24.25d? | 2019-01-19 A | 2019-02-18 | 3 | 49% | 12.49d? | 1.75d |  |  |
| 5 | 1.3.1 | **Planificación** |  | 6.25d | 2019-01-19 A | 2019-01-28 A |  | 100% |  |  |  |  |
| 6 | 1.3.1.1 | **Plan de proyecto** |  | 6.25d | 2019-01-19 A | 2019-01-28 A |  | 100% |  |  |  |  |
| 7 | 1.3.1.1.1 | **Elaboración del Plan de proyecto** |  | 6d | 2019-01-19 A | 2019-01-26 A |  | 100% |  |  |  |  |
| 8 | 1.3.1.1.1.1 | Elaboración del Plan de proyecto |  | 2d | 2019-01-19 A | 2019-01-22 A |  | 100% |  |  |  |  |
| 9 | 1.3.1.1.1.2 | Elaboracion del registro de riesgos |  | 1d | 2019-01-22 A | 2019-01-23 A | 8 | 100% |  |  |  |  |
| 10 | 1.3.1.1.1.3 | Elaboración de la LMR |  | 1d | 2019-01-23 A | 2019-01-24 A | 9 | 100% |  |  |  |  |
| 11 | 1.3.1.1.1.4 | Elaboración del cronograma |  | 2d | 2019-01-24 A | 2019-01-26 A | 10 | 100% |  |  |  | finish no earlier than 2019-01-25 |
| 12 | 1.3.1.1.2 | **Revisión por el cliente** |  | 0.25d | 2019-01-26 A | 2019-01-26 A |  | 100% |  |  |  |  |
| 13 | 1.3.1.1.2.1 | Reunión conjunta de revisión del Plan del Proyecto |  | 0.25d | 2019-01-26 A | 2019-01-26 A | 11 | 100% |  |  |  | finish no earlier than 2019-01-26 |
| 14 | 1.3.1.1.3 | Plan de proyecto aprovado | milestone | 0d | 2019-01-28 A | 2019-01-28 A |  | 100% |  |  |  | start no earlier than 2019-01-28 |
| 15 | 1.3.2 | **Asignación, Ejecución, Seguimiento y Control** |  | 18d? | 2019-01-28 A | 2019-02-18 | 5 | 28% | 13d? | 1.75d |  |  |
| 16 | 1.3.2.1 | **Aseguramiento de Calidad** |  | 18d? | 2019-01-28 A | 2019-02-18 |  | 28% | 13d? | 1.75d |  |  |
| 17 | 1.3.2.1.1 | **Aseguramiento de Calidad Semana 1** |  | 6d? | 2019-01-28 A | 2019-02-04 |  | 83% | 1d? | 1.75d | 0d |  |
| 18 | 1.3.2.1.1.1 | Preparar las actividades de QA |  | 2d | 2019-01-28 A | 2019-01-29 A |  | 100% |  |  |  |  |
| 19 | 1.3.2.1.1.2 | Ejecutar la Revisión de QA - Procesos |  | 1d? | 2019-01-30 A | 2019-01-30 A | 18 | 100% |  |  |  |  |
| 20 | 1.3.2.1.1.3 | Levantar la No Conformidad |  | 1d? | 2019-01-31 A | 2019-01-31 A | 19 | 100% |  |  |  |  |
| 21 | 1.3.2.1.1.4 | Realizar el seguimiento |  | 1d? | 2019-02-01 A | 2019-02-01 A | 20 | 100% |  |  |  |  |
| 22 | 1.3.2.1.1.5 | Elaborar e Informar las actividades de QA a la Gerencia del Servicio |  | 1d? | 2019-02-02 | 2019-02-04 | 21 |  |  | 1.75d |  |  |
| 23 | 1.3.2.1.2 | **Aseguramiento de Calidad Semana 2** |  | 6d? | 2019-02-04 | 2019-02-11 | 17 |  |  | 1.75d | 0d |  |
| 24 | 1.3.2.1.2.1 | Preparar las actividades de QA |  | 2d | 2019-02-04 | 2019-02-06 |  |  |  | 1.75d | 0d |  |
| 25 | 1.3.2.1.2.2 | Ejecutar la Revisión de QA - Procesos |  | 1d? | 2019-02-06 | 2019-02-07 | 24 |  |  | 1.75d | 0d |  |
| 26 | 1.3.2.1.2.3 | Levantar la No Conformidad |  | 1d? | 2019-02-07 | 2019-02-08 | 25 |  |  | 1.75d | 0d |  |
| 27 | 1.3.2.1.2.4 | Realizar el seguimiento |  | 1d? | 2019-02-08 | 2019-02-09 | 26 |  |  | 1.75d | 0d |  |
| 28 | 1.3.2.1.2.5 | Elaborar e Informar las actividades de QA a la Gerencia del Servicio |  | 1d? | 2019-02-09 | 2019-02-11 | 27 |  |  | 1.75d |  |  |

| ID | WBS | Task | Type | Duration | Start | Finish | Predecessors | Complete | Remaining | Total slack | Free slack |
| --- | --- | --- | --- | --- | --- | --- | --- | --- | --- | --- | --- |
| 29 | 1.3.2.1.3 | **Aseguramiento de Calidad Semana 3** |  | 6d? | 2019-02-11 | 2019-02-18 | 23 |  |  | 1.75d |  |
| 30 | 1.3.2.1.3.1 | Preparar las actividades de QA |  | 2d | 2019-02-11 | 2019-02-13 |  |  |  | 1.75d | 0d |
| 31 | 1.3.2.1.3.2 | Ejecutar la Revisión de QA - Procesos |  | 1d? | 2019-02-13 | 2019-02-14 | 30 |  |  | 1.75d | 0d |
| 32 | 1.3.2.1.3.3 | Levantar la No Conformidad |  | 1d? | 2019-02-14 | 2019-02-15 | 31 |  |  | 1.75d | 0d |
| 33 | 1.3.2.1.3.4 | Realizar el seguimiento |  | 1d? | 2019-02-15 | 2019-02-16 | 32 |  |  | 1.75d | 0d |
| 34 | 1.3.2.1.3.5 | Elaborar e Informar las actividades de QA a la Gerencia del Servicio |  | 1d? | 2019-02-16 | 2019-02-18 | 33 |  |  | 1.75d |  |
| 35 | 1.3.3 | **Cierre** |  | 1d? | 2019-01-19 A | 2019-01-21 A |  | 100% |  |  |  |
| 36 | 1.3.3.1 | <New Task> |  | 1d? | 2019-01-19 A | 2019-01-21 A |  | 100% |  |  |  |
| 37 | 1.3.3.2 | Cierre del proyecto | milestone | 0d | 2019-01-19 A | 2019-01-19 A |  | 100% |  |  |  |
| 38 | 1.4 | **Procesos de Ingenieria** |  | 32d? | 2019-01-12 A | 2019-02-20 |  | 54% | 14.75d? | 0d |  |
| 39 | 1.4.1 | **Analisis** |  | 5d? | 2019-01-12 A | 2019-01-18 A |  | 100% |  |  |  |
| 40 | 1.4.1.1 | **Casos de Uso** |  | 3d? | 2019-01-12 A | 2019-01-16 A |  | 100% |  |  |  |
| 41 | 1.4.1.1.1 | Entender el OGC |  | 1d? | 2019-01-12 A | 2019-01-14 A |  | 100% |  |  |  |
| 42 | 1.4.1.1.2 | Capacitación en el OGC |  | 1d? | 2019-01-14 A | 2019-01-15 A | 41 | 100% |  |  |  |
| 43 | 1.4.1.1.3 | Actualizar glosario de términos |  | 1d? | 2019-01-15 A | 2019-01-16 A | 42 | 100% |  |  |  |
| 44 | 1.4.1.2 | **Modelo de Analisis** |  | 2d? | 2019-01-16 A | 2019-01-18 A | 40 | 100% |  |  |  |
| 45 | 1.4.1.2.1 | Solicitud de relación de usuarios líderes al líder del proyecto |  | 1d? | 2019-01-16 A | 2019-01-17 A |  | 100% |  |  |  |
| 46 | 1.4.1.2.2 | Solicitud de usuarios objetivos a los usuarios líderes |  | 1d? | 2019-01-17 A | 2019-01-18 A | 45 | 100% |  |  |  |
| 47 | 1.4.2 | **Diseño** |  | 15d? | 2019-01-18 A | 2019-02-05 | 39 | 82% | 2.75d? | 0d |  |
| 48 | 1.4.2.1 | **Documento de Diseño** |  | 4d? | 2019-01-18 A | 2019-01-23 A |  | 100% |  |  |  |
| 49 | 1.4.2.1.1 | Análisis de la información |  | 1d? | 2019-01-18 A | 2019-01-19 A |  | 100% |  |  |  |
| 50 | 1.4.2.1.2 | Definir forma y características de formación |  | 1d? | 2019-01-19 A | 2019-01-21 A | 49 | 100% |  |  |  |
| 51 | 1.4.2.1.3 | Definir medios de comunicación |  | 1d? | 2019-01-21 A | 2019-01-22 A | 50 | 100% |  |  |  |
| 52 | 1.4.2.1.4 | Elaboración de presentación de la estrategia |  | 1d? | 2019-01-22 A | 2019-01-23 A | 51 | 100% |  |  |  |

| ID | WBS | Task | Duration | Start | Finish | Predecessors | Complete | Remaining | Total slack |
| --- | --- | --- | --- | --- | --- | --- | --- | --- | --- |
| 53 | 1.4.2.2 | **Verificación del coordinador** | 2d? | 2019-01-23 A | 2019-01-25 A | 48 | 100% |  |  |
| 54 | 1.4.2.2.1 | Verificación de la estrategía de formación y comunicación por el coordinador | 1d? | 2019-01-23 A | 2019-01-24 A |  | 100% |  |  |
| 55 | 1.4.2.2.2 | Adecuación de Cambios | 1d? | 2019-01-24 A | 2019-01-25 A | 54 | 100% |  |  |
| 56 | 1.4.2.3 | **Aseguramiento de calidad** | 6d? | 2019-01-25 A | 2019-02-01 A | 53 | 100% |  |  |
| 57 | 1.4.2.3.1 | Preparar las actividades de QA. | 1d? | 2019-01-25 A | 2019-01-26 A |  | 100% |  |  |
| 58 | 1.4.2.3.2 | Ejecutar la Revisión de QA | 1d? | 2019-01-26 A | 2019-01-28 A | 57 | 100% |  |  |
| 59 | 1.4.2.3.3 | Ejecutar la Revisión de procesos | 1d? | 2019-01-28 A | 2019-01-29 A | 58 | 100% |  |  |
| 60 | 1.4.2.3.4 | Levantar la No Conformidad | 1d? | 2019-01-29 A | 2019-01-30 A | 59 | 100% |  |  |
| 61 | 1.4.2.3.5 | Realizar el seguimiento | 1d? | 2019-01-30 A | 2019-01-31 A | 60 | 100% |  |  |
| 62 | 1.4.2.3.6 | Elaborar e Informar las actividades de QA a la Gerencia del Servicio | 1d? | 2019-01-31 A | 2019-02-01 A | 61 | 100% |  |  |
| 63 | 1.4.2.4 | **Validación del cliente** | 2d? | 2019-02-01 A | 2019-02-04 | 56 | 13% | 1.75d? | 0d |
| 64 | 1.4.2.4.1 | Revisión de estrategía de comunicación y formación | 1d? | 2019-02-01 A | 2019-02-02 |  | 25% | 0.75d? | 0d |
| 65 | 1.4.2.4.2 | Adecuación de cambios | 1d? | 2019-02-04 | 2019-02-04 | 64 |  |  | 0d |
| 66 | 1.4.2.5 | **Gestión de la configuración** | 1d? | 2019-02-05 | 2019-02-05 | 63 |  |  | 0d |
| 67 | 1.4.2.5.1 | Realizar Control de Cambios a Baselines | 1d? | 2019-02-05 | 2019-02-05 |  |  |  | 0d |
| 68 | 1.4.3 | **Desarrollo** | 10d? | 2019-02-06 | 2019-02-18 | 47 |  |  | 0d |
| 69 | 1.4.3.1 | **Iteración 1** | 2d? | 2019-02-06 | 2019-02-07 |  |  |  | 0d |
| 70 | 1.4.3.1.1 | Planificación de Formación | 1d? | 2019-02-06 | 2019-02-06 |  |  |  | 0d |
| 71 | 1.4.3.1.2 | Codigo Fuente 1 | 1d? | 2019-02-07 | 2019-02-07 | 70 |  |  | 0d |
| 72 | 1.4.3.2 | **Iteración 2** | 3d? | 2019-02-08 | 2019-02-12 | 69 |  |  | 0d |
| 73 | 1.4.3.2.1 | Verificación de la planificación de formación y comunicación | 1d? | 2019-02-08 | 2019-02-08 |  |  |  | 0d |
| 74 | 1.4.3.2.2 | Adecuación de Cambios | 1d? | 2019-02-09 | 2019-02-11 | 73 |  |  | 0d |
| 75 | 1.4.3.2.3 | Casos de Prueba | 1d? | 2019-02-11 | 2019-02-12 | 74 |  |  | 0d |
| 76 | 1.4.3.3 | **Iteración 3** | 5d? | 2019-02-12 | 2019-02-18 | 72 |  |  | 0d |
| 77 | 1.4.3.3.1 | Solución en ambiente de Pruebas | 1d? | 2019-02-12 | 2019-02-13 |  |  |  | 0d |
| 78 | 1.4.3.3.2 | Gestión de configuración (líneas de base) | 1d? | 2019-02-13 | 2019-02-14 | 77 |  |  | 0d |
| 79 | 1.4.3.3.3 | Validación de Usuario | 1d? | 2019-02-14 | 2019-02-15 | 78 |  |  | 0d |
| 80 | 1.4.3.3.4 | Aceptación | 1d? | 2019-02-15 | 2019-02-16 | 79 |  |  | 0d |
| 81 | 1.4.3.3.5 | Aceptación | 1d? | 2019-02-16 | 2019-02-18 | 80 |  |  | 0d |

| ID | WBS | Task | Duration | Start | Finish | Predecessors | Total slack |
| --- | --- | --- | --- | --- | --- | --- | --- |
| 82 | 1.4.4 | **Implementación** | 2d? | 2019-02-18 | 2019-02-20 | 68 | 0d |
| 83 | 1.4.4.1 | **Iteración 1** | 2d? | 2019-02-18 | 2019-02-20 |  | 0d |
| 84 | 1.4.4.1.1 | Planificación de Formación | 1d? | 2019-02-18 | 2019-02-19 |  | 0d |
| 85 | 1.4.4.1.2 | Solución en Procucción | 1d? | 2019-02-19 | 2019-02-20 | 84 | 0d |
